# Domaci1

Schedule from MS Project, 2022-11-01 to 2023-01-02, status date 2022-11-16, costs in €, A marks actual dates.

## Calendars

- Standard: Mon-Fri 08:00-12:00, 13:00-17:00; Sat-Sun off.

## Resources

| Resource | Unit | Rate | Cost per use | Notes |
| --- | --- | --- | --- | --- |
| Direktor |  | 80 | 80 | CEO Dimitrije Sokolovic |
| Menadzer nabavke |  | 50 | 50 |  |
| Menadzer proizvodnje |  | 60 | 60 |  |
| Menadzer prodaje |  | 50 | 50 |  |
| Magacioner |  | 30 | 30 |  |
| Glavni majstor |  | 50 | 50 |  |
| Pomocni majstor |  | 40 | 40 |  |
| Farbar |  | 40 | 40 |  |
| Elektricar |  | 40 | 40 |  |
| Drvo - Mahagonij | kom | 80 | 83 |  |
| Drvo - Javor | kom | 60 | 65 |  |
| Drvo - Ebonovina | kom | 65 | 67 |  |
| Pragovi | kom | 4 | 5 |  |
| Civije | kom | 6 | 7 |  |
| Sedef | kg | 45 | 50 |  |
| Magneti | kom | 80 | 85 |  |
| Kobilica | kom | 12 | 15 |  |
| Elektronika | kom | 45 | 50 |  |
| Kompresor za farbanje |  |  |  |  |
| Uredjaj za poliranje |  |  |  |  |
| Pomocni radnik |  | 10 | 15 |  |
| Studijski muzicar |  |  |  | Odgovoran za testiranje gitara |
| Prodavac u radnji |  | 20 | 20 |  |
| Web administrator |  | 25 | 25 |  |
| Pomocni radnik 2 |  | 10 | 15 |  |
| Testeri |  | 25 | 25 |  |
| Radnik za kutije |  | 10 | 15 |  |
| Pomocni radnik 3 |  | 10 | 15 |  |
| Smirgla |  |  |  |  |
| Farbar 2 |  | 40 | 40 |  |
| Vozac dostaljvac |  | 20 | 20 |  |

## Schedule

| ID | WBS | Task | Type | Duration | Start | Finish | Predecessors | Complete | Remaining | Actual finish | Baseline start | Baseline finish | Baseline duration | Total slack | Free slack | Constraint | Resources | Work | Actual work | Cost | Baseline cost | Actual cost |
| --- | --- | --- | --- | --- | --- | --- | --- | --- | --- | --- | --- | --- | --- | --- | --- | --- | --- | --- | --- | --- | --- | --- |
| 1 | 1 | **Izrada I isporuka gitare** |  | 44.77d | 2022-11-01 A | 2023-01-02 |  | 26% | 33.27d |  | 2022-11-01 | 2023-01-02 | 44.77d | 0d |  |  |  | 713.83h | 177.33h | 30,087.66 | 30,087.66 | 8,235.3 |
| 2 | 1.1 | **Obrada upita za gitaru** |  | 6d | 2022-11-01 A | 2022-11-08 |  | 100% |  | 2022-11-07 | 2022-11-01 | 2022-11-08 | 6d |  |  |  |  | 38.33h | 38.33h | 2,326.67 | 2,326.67 | 2,326.67 |
| 3 | 1.1.1 | Prijem upita (online) |  | 1d | 2022-11-01 A | 2022-11-01 A |  | 100% |  |  | 2022-11-01 | 2022-11-01 | 1d |  |  |  | Web administrator | 8h | 8h | 225 | 225 | 225 |
| 4 | 1.1.2 | Prijem upita (uzivo) |  | 1d | 2022-11-01 A | 2022-11-01 A | 3SS | 100% |  |  | 2022-11-01 | 2022-11-01 | 1d |  |  |  | Prodavac u radnji | 8h | 8h | 180 | 180 | 180 |
| 5 | 1.1.3 | Dnevni jutarnji sastanak |  | 30min | 2022-11-02 A | 2022-11-02 A | 3, 4 | 100% |  |  | 2022-11-02 | 2022-11-02 | 30min |  |  |  | Direktor; Menadzer nabavke; Menadzer prodaje; Menadzer proizvodnje | 2h | 2h | 360 | 360 | 360 |
| 6 | 1.1.4 | Provera raspolozivih materijala I materijala koje treba naknadno nabaviti |  | 4h | 2022-11-02 A | 2022-11-02 A | 5 | 100% |  |  | 2022-11-02 | 2022-11-02 | 4h |  |  |  | Glavni majstor; Magacioner; Pomocni majstor | 12h | 12h | 600 | 600 | 600 |
| 7 | 1.1.5 | Dnevni jutarnji sastanak |  | 30min | 2022-11-02 A | 2022-11-02 A | 6 | 100% |  |  | 2022-11-02 | 2022-11-02 | 30min |  |  |  | Direktor; Menadzer nabavke; Menadzer prodaje; Menadzer proizvodnje | 2h | 2h | 360 | 360 | 360 |
| 8 | 1.1.6 | Definisanje roka I cene nabavke nedostajuceg materijala |  | 3h | 2022-11-02 A | 2022-11-02 A | 7 | 100% |  |  | 2022-11-02 | 2022-11-02 | 3h |  |  |  | Menadzer nabavke | 3h | 3h | 200 | 200 | 200 |
| 9 | 1.1.7 | Formiranje finalne ponude sa definisanjem roka za izradu I isporuku |  | 2h | 2022-11-03 A | 2022-11-03 A | 8 | 100% |  |  | 2022-11-03 | 2022-11-03 | 2h |  |  |  | Menadzer prodaje | 2h | 2h | 150 | 150 | 150 |
| 10 | 1.1.8 | Slanje finalnih ponuda |  | 1h | 2022-11-03 A | 2022-11-03 A | 9 | 100% |  |  | 2022-11-03 | 2022-11-03 | 1h |  |  |  | Menadzer prodaje | 1h | 1h | 100 | 100 | 100 |
| 11 | 1.1.9 | Prihvatanje finalnih ponuda |  | 10min | 2022-11-07 A | 2022-11-07 A | 10FS+2d | 100% |  |  | 2022-11-07 | 2022-11-07 | 10min |  |  |  | Menadzer prodaje | 0.17h | 0.17h | 58.33 | 58.33 | 58.33 |
| 12 | 1.1.10 | Provera uplate 50% avansa |  | 10min | 2022-11-07 A | 2022-11-07 A | 11SS | 100% |  |  | 2022-11-07 | 2022-11-07 | 10min |  |  |  | Direktor | 0.17h | 0.17h | 93.33 | 93.33 | 93.33 |
| 13 | 1.1.11 | Zavrsetask obrade upita | milestone | 0d | 2022-11-07 A | 2022-11-07 A | 12 | 100% |  |  | 2022-11-07 | 2022-11-07 | 0d |  |  |  |  |  |  |  |  |  |
| 14 | 1.2 | **Faza pripreme proizvodnje** |  | 2d | 2022-11-07 A | 2022-11-09 | 13 | 100% |  | 2022-11-08 | 2022-11-07 | 2022-11-09 | 2d |  |  |  |  | 16.5h | 16.5h | 1,180 | 1,180 | 1,180 |
| 15 | 1.2.1 | Dnevni jutarnji sastanak |  | 30min | 2022-11-07 A | 2022-11-07 A | 13 | 100% |  |  | 2022-11-07 | 2022-11-07 | 30min |  |  |  | Direktor; Menadzer nabavke; Menadzer prodaje; Menadzer proizvodnje | 2h | 2h | 360 | 360 | 360 |
| 16 | 1.2.2 | Davanje naloga za proizvodnju |  | 30min | 2022-11-07 A | 2022-11-07 A | 15 | 100% |  |  | 2022-11-07 | 2022-11-07 | 30min |  |  |  | Menadzer proizvodnje | 0.5h | 0.5h | 90 | 90 | 90 |
| 17 | 1.2.3 | Nabavljanje neodstajuceg materijala |  | 1d | 2022-11-07 A | 2022-11-08 A | 16 | 100% |  |  | 2022-11-07 | 2022-11-08 | 1d |  |  |  | Menadzer nabavke | 8h | 8h | 450 | 450 | 450 |
| 18 | 1.2.4 | Primopredaja potrebnih materijala koji su na lageru |  | 3h | 2022-11-07 A | 2022-11-07 A | 16 | 100% |  |  | 2022-11-07 | 2022-11-07 | 3h |  |  |  | Magacioner; Pomocni majstor | 6h | 6h | 280 | 280 | 280 |
| 19 | 1.2.5 | Zavrsetak pripreme proizvodnje | milestone | 0d | 2022-11-07 A | 2022-11-07 A | 18 | 100% |  |  | 2022-11-07 | 2022-11-07 | 0d |  |  |  |  |  |  |  |  |  |
| 20 | 1.3 | **Faza proizvodnje** |  | 36d | 2022-11-07 A | 2022-12-27 | 19 | 24% | 27.49d |  | 2022-11-07 | 2022-12-27 | 36d |  |  |  |  | 600h | 122.5h | 24,638.49 | 24,638.49 | 4,728.64 |
| 21 | 1.3.1 | Izrada kutije |  | 7d | 2022-11-07 A | 2022-11-17 | 19 | 59% | 2.9d |  | 2022-11-07 | 2022-11-17 | 7d | 31.88d |  |  | Radnik za kutije | 56h | 32.83h | 575 | 575 | 343.33 |
| 22 | 1.3.2 | Obrada drveta za telo gitare |  | 4d | 2022-11-07 A | 2022-11-14 A | 19 | 100% |  |  | 2022-11-07 | 2022-11-14 | 4d |  |  | finish no later than 2022-11-14 | Glavni majstor; Drvo - Mahagonij [1 kom] | 32h | 32h | 1,775.49 | 1,775.49 | 1,775.49 |
| 23 | 1.3.3 | Obrada drveta za vrat gitare |  | 3d | 2022-11-08 A | 2022-11-14 A | 22FF | 100% |  |  | 2022-11-08 | 2022-11-14 | 3d |  |  | finish no later than 2022-11-14 | Pomocni majstor [50%]; Drvo - Javor [1 kom]; Pomocni radnik 2 [50%] | 24h | 24h | 752.5 | 752.5 | 752.5 |
| 24 | 1.3.4 | Obrada ploce za pragove gitare |  | 2d | 2022-11-09 A | 2022-11-14 A | 22FF | 100% |  |  | 2022-11-09 | 2022-11-14 | 2d |  |  | finish no later than 2022-11-14 | Pomocni radnik [50%]; Drvo - Ebonovina [1 kom] | 8h | 8h | 219.5 | 219.5 | 219.5 |
| 25 | 1.3.5 | Pripreme elektronike |  | 3d | 2022-11-08 A | 2022-11-14 A | 22FF | 100% |  |  | 2022-11-08 | 2022-11-14 | 3d |  |  |  | Elektricar; Elektronika [4 kom] | 24h | 24h | 1,230 | 1,230 | 1,230 |
| 26 | 1.3.6 | Sastavljanje tela gitare |  | 8d | 2022-11-14 A | 2022-11-25 | 24 | 1% | 7.9d |  | 2022-11-14 | 2022-11-25 | 8d | 25.88d |  |  | Drvo - Mahagonij [1 kom]; Glavni majstor | 64h | 0.83h | 3,413 | 3,413 | 175.71 |
| 27 | 1.3.7 | Spajanje vrata I pragova |  | 10d | 2022-11-14 A | 2022-11-28 | 24 | 1% | 9.9d |  | 2022-11-14 | 2022-11-28 | 10d | 0d |  |  | Drvo - Ebonovina [1 kom]; Drvo - Javor [1 kom]; Pomocni majstor [50%]; Pomocni radnik [50%]; Sedef [1 kg] | 80h | 0.83h | 2,379.5 | 2,379.5 | 232.1 |
| 28 | 1.3.8 | Sastavljanje tela sa vratom |  | 7d | 2022-11-28 | 2022-12-07 | 27 |  |  |  | 2022-11-28 | 2022-12-07 | 7d | 0d |  |  | Drvo - Ebonovina [1 kom]; Drvo - Javor [1 kom]; Drvo - Mahagonij [1 kom]; Glavni majstor; Pomocni majstor [50%] | 84h |  | 4,410 | 4,410 |  |
| 29 | 1.3.9 | Farbanje |  | 4d | 2022-12-07 | 2022-12-13 | 28 |  |  |  | 2022-12-07 | 2022-12-13 | 4d | 8.88d | 0d |  | Farbar; Kompresor za farbanje [0.1%] | 32h |  | 1,320 | 1,320 |  |
| 30 | 1.3.10 | Susenje |  | 5d | 2022-12-13 | 2022-12-20 | 29 |  |  |  | 2022-12-13 | 2022-12-20 | 5d | 8.88d |  |  | Pomocni radnik 2 [50%] | 20h |  | 207.5 | 207.5 |  |
| 31 | 1.3.11 | Smirglanje |  | 1d | 2022-12-13 | 2022-12-14 | 29 |  |  |  | 2022-12-13 | 2022-12-14 | 1d | 11.88d | 0d |  | Smirgla [0.1%] |  |  |  |  |  |
| 32 | 1.3.12 | Lakiranje I dorada |  | 7d | 2022-12-07 | 2022-12-19 | 28 |  |  |  | 2022-12-07 | 2022-12-19 | 7d | 0d |  |  | Glavni majstor; Kompresor za farbanje [0.1%]; Sedef [0.3 kg]; Uredjaj za poliranje [0.1%]; Farbar 2 | 112h |  | 5,193.5 | 5,193.5 |  |
| 33 | 1.3.13 | Susenje |  | 2d | 2022-12-19 | 2022-12-21 | 32 |  |  |  | 2022-12-19 | 2022-12-21 | 2d | 7.88d |  |  | Pomocni radnik [50%] | 8h |  | 87.5 | 87.5 |  |
| 34 | 1.3.14 | Poliranje |  | 1d | 2022-12-14 | 2022-12-15 | 31 |  |  |  | 2022-12-14 | 2022-12-15 | 1d | 11.88d |  |  | Pomocni radnik 3; Uredjaj za poliranje [0.1%] | 8h |  | 95 | 95 |  |
| 35 | 1.3.15 | Montaza elektronike |  | 2d | 2022-12-19 | 2022-12-21 | 32 |  |  |  | 2022-12-19 | 2022-12-21 | 2d | 0d |  |  | Elektricar; Elektronika [3 kom]; Magneti [4 kom] | 16h |  | 1,270 | 1,270 |  |
| 36 | 1.3.16 | Montaza metalnih delova |  | 2d | 2022-12-19 | 2022-12-21 | 35SS |  |  |  | 2022-12-19 | 2022-12-21 | 2d | 0d |  |  | Civije [6 kom]; Glavni majstor; Kobilica [1 kom]; Pomocni majstor [50%] | 24h |  | 1,260 | 1,260 |  |
| 37 | 1.3.17 | Generalni setup |  | 1d | 2022-12-21 | 2022-12-22 | 36 |  |  |  | 2022-12-21 | 2022-12-22 | 1d | 0d |  |  | Glavni majstor | 8h |  | 450 | 450 |  |
| 38 | 1.3.18 | Zavrsetak faze proizvodnje | milestone | 0d | 2022-12-22 | 2022-12-22 | 37 |  |  |  | 2022-12-22 | 2022-12-22 | 0d | 0d |  |  |  |  |  |  |  |  |

Notes:
- 5: Ovo je dnevni sastanak koji se odrzava svaki dan ali ga nisam stavljao kao recurrent task jer bi ih bilo jako mnogo
- 20: Najduza i najbitnija faza.

| ID | WBS | Task | Type | Duration | Start | Finish | Predecessors | Complete | Remaining | Baseline start | Baseline finish | Baseline duration | Total slack | Free slack | Constraint | Resources | Work | Cost | Baseline cost |
| --- | --- | --- | --- | --- | --- | --- | --- | --- | --- | --- | --- | --- | --- | --- | --- | --- | --- | --- | --- |
| 39 | 1.4 | **Faza testiranja** |  | 3d | 2022-12-22 | 2022-12-27 | 38 |  |  | 2022-12-22 | 2022-12-27 | 3d |  |  |  |  | 24h | 995 | 995 |
| 40 | 1.4.1 | Sastanak povodom testiranja |  | 1h | 2022-12-22 | 2022-12-23 | 38 |  |  | 2022-12-22 | 2022-12-23 | 1h | 0d |  |  | Glavni majstor; Menadzer proizvodnje; Studijski muzicar [0.1%] | 2h | 220 | 220 |
| 41 | 1.4.2 | Inspekcija kvaliteta |  | 1d | 2022-12-26 | 2022-12-27 | 40FS+1d |  |  | 2022-12-26 | 2022-12-27 | 1d | 0d |  |  | Testeri | 8h | 225 | 225 |
| 42 | 1.4.3 | Testiranje kobilice |  | 4h | 2022-12-26 | 2022-12-27 | 44 |  |  | 2022-12-26 | 2022-12-27 | 4h | 4.38d |  |  | Testeri | 4h | 125 | 125 |
| 43 | 1.4.4 | Testiranje vrata |  | 3h | 2022-12-26 | 2022-12-27 | 44 |  |  | 2022-12-26 | 2022-12-27 | 3h | 4.5d |  |  | Testeri | 3h | 100 | 100 |
| 44 | 1.4.5 | Testiranje magneta |  | 5h | 2022-12-26 | 2022-12-26 | 41SF |  |  | 2022-12-26 | 2022-12-26 | 5h | 4.38d | 0d |  | Testeri | 5h | 150 | 150 |
| 45 | 1.4.6 | Testiranje civija |  | 2h | 2022-12-26 | 2022-12-26 | 44SF |  |  | 2022-12-26 | 2022-12-26 | 2h | 5.5d | 0d |  | Testeri | 2h | 75 | 75 |
| 46 | 1.4.7 | Ekspertsko testiranje |  | 6h | 2022-12-23 | 2022-12-26 | 45SF |  |  | 2022-12-23 | 2022-12-26 | 6h | 5.75d |  |  | Studijski muzicar [0.1%] |  | 100 | 100 |
| 47 | 1.4.8 | Zavrsetak faze testiranja | milestone | 0d | 2022-12-27 | 2022-12-27 | 41 |  |  | 2022-12-27 | 2022-12-27 | 0d | 0d |  |  |  |  |  |  |
| 48 | 1.5 | **Faza posiljke** |  | 3.88d | 2022-12-27 | 2023-01-02 | 47 |  |  | 2022-12-27 | 2023-01-02 | 3.88d | 0d |  |  |  | 35h | 947.5 | 947.5 |
| 49 | 1.5.1 | Finalno pakovanje |  | 1d | 2022-12-27 | 2022-12-28 | 47 |  |  | 2022-12-27 | 2022-12-28 | 1d | 2.88d |  |  | Pomocni radnik [50%] | 4h | 47.5 | 47.5 |
| 50 | 1.5.2 | Pripema dokumentacije - garancije |  | 5h | 2022-12-27 | 2022-12-28 | 47 |  |  | 2022-12-27 | 2022-12-28 | 5h | 0d |  |  | Menadzer prodaje | 5h | 300 | 300 |
| 51 | 1.5.3 | Isporuka na adresu |  | 2d | 2022-12-28 | 2022-12-30 | 50 |  |  | 2022-12-28 | 2022-12-30 | 2d | 0d |  |  | Vozac dostaljvac | 16h | 340 | 340 |
| 52 | 1.5.4 | Potvrda o prijemu |  | 1h | 2022-12-30 | 2022-12-30 | 51 |  |  | 2022-12-30 | 2022-12-30 | 1h | 0d |  |  | Vozac dostaljvac | 1h | 40 | 40 |
| 53 | 1.5.5 | Popunjavanje garancije |  | 1d | 2022-12-30 | 2023-01-02 | 52 |  |  | 2022-12-30 | 2023-01-02 | 1d | 0d |  |  | Vozac dostaljvac | 8h | 180 | 180 |
| 54 | 1.5.6 | Prijem uplate po preuzimanju |  | 1h | 2023-01-02 | 2023-01-02 | 53 |  |  | 2023-01-02 | 2023-01-02 | 1h | 0d |  |  | Vozac dostaljvac | 1h | 40 | 40 |
| 55 | 1.5.7 | Zavrsetak faze posiljke | milestone, manual | 0d | 2023-01-02 | 2023-01-02 | 54 |  |  | 2023-01-02 | 2023-01-02 | 0d |  |  |  |  |  |  |  |
| 56 | 1.6 | **Nedeljni sastanak** |  | 36d | 2022-11-01 A | 2022-12-20 |  | 25% | 27d | 2022-11-01 | 2022-12-20 | 36d | 0d |  |  |  |  |  |  |
| 57 | 1.6.1 | Nedeljni sastanak 1 | manual | 1d | 2022-11-01 A | 2022-11-01 A |  | 100% |  | 2022-11-01 | 2022-11-01 | 1d |  |  | start no earlier than 2022-11-01 |  |  |  |  |
| 58 | 1.6.2 | Nedeljni sastanak 2 | manual | 1d | 2022-11-08 A | 2022-11-08 A |  | 100% |  | 2022-11-08 | 2022-11-08 | 1d |  |  | start no earlier than 2022-11-08 |  |  |  |  |
| 59 | 1.6.3 | Nedeljni sastanak 3 | manual | 1d | 2022-11-15 | 2022-11-15 |  |  |  | 2022-11-15 | 2022-11-15 | 1d |  |  | start no earlier than 2022-11-15 |  |  |  |  |
| 60 | 1.6.4 | Nedeljni sastanak 4 | manual | 1d | 2022-11-22 | 2022-11-22 |  |  |  | 2022-11-22 | 2022-11-22 | 1d |  |  | start no earlier than 2022-11-22 |  |  |  |  |
| 61 | 1.6.5 | Nedeljni sastanak 5 | manual | 1d | 2022-11-29 | 2022-11-29 |  |  |  | 2022-11-29 | 2022-11-29 | 1d |  |  | start no earlier than 2022-11-29 |  |  |  |  |
| 62 | 1.6.6 | Nedeljni sastanak 6 | manual | 1d | 2022-12-06 | 2022-12-06 |  |  |  | 2022-12-06 | 2022-12-06 | 1d |  |  | start no earlier than 2022-12-06 |  |  |  |  |
| 63 | 1.6.7 | Nedeljni sastanak 7 | manual | 1d | 2022-12-13 | 2022-12-13 |  |  |  | 2022-12-13 | 2022-12-13 | 1d |  |  | start no earlier than 2022-12-13 |  |  |  |  |
| 64 | 1.6.8 | Nedeljni sastanak 8 | manual | 1d | 2022-12-20 | 2022-12-20 |  |  |  | 2022-12-20 | 2022-12-20 | 1d |  |  | start no earlier than 2022-12-20 |  |  |  |  |

Notes:
- 46: Ekspertsko testiranje koje pocinje pre same inspekcije kvaliteta, jer u nekim retkim slucajevima gitara ume da zvuci veoma dobro iako su neki njeni delovi ispod zeljenog kvaliteta. Takve gitare obicno umeju da budu veoma vredne
- 53: Popunjava vozac dostavljac na licu mesta predaje gitare, prima i potvrdu o uplati.
